# COMPONEN TECH

Schedule from MS Project, 2020-04-21 to 2021-08-12, costs in $, A marks actual dates.

## Calendars

- Estandar: Mon-Fri 08:00-12:00, 13:00-17:00; Sat-Sun off.

## Resources

| Resource | Rate |
| --- | --- |
| No Asignado |  |
| Computador 1 | 122.22 |
| Computador 2 | 133.33 |
| Computador 3 | 125.12 |
| Computador 4 | 110.54 |
| Yeren Palacios | 6230 |
| Jhon Monroy | 6230 |
| Kevin Cendales | 6230 |
| Marlon Jaramillo | 6230 |
| Electricidad | 800 |
| Internet | 1600 |

## Schedule

| ID | WBS | Task | Duration | Start | Finish | Predecessors | Complete | Remaining | Total slack | Free slack | Constraint | Resources | Work | Actual work | Cost | Actual cost |
| --- | --- | --- | --- | --- | --- | --- | --- | --- | --- | --- | --- | --- | --- | --- | --- | --- |
| 1 | 1 | **Análisis** | 48d | 2020-04-21 A | 2020-06-25 |  | 95% | 2.53d | 6d |  |  |  | 608h | 576h | 3,804,319.9 | 3,590,304 |
| 2 | 1.1 | Componente metodológico | 2d | 2020-04-21 A | 2020-04-22 |  | 99% | 0d | 10d | 7d | finish no earlier than 2020-04-30 | Computador 1 [95%]; Computador 2 [95%]; Computador 3 [95%]; Computador 4 [95%]; Jhon Monroy; Kevin Cendales; Marlon Jaramillo; Yeren Palacios; Electricidad [95%]; Internet [95%] | 64h | 64h | 401,466.65 | 398,720 |
| 3 | 1.2 | Tecnicas de levantamiento de información | 3d | 2020-05-04 A | 2020-05-06 | 2 | 99% | 0d | 4d | 2d | start no earlier than 2020-05-04 | Computador 1 [95%]; Computador 2 [95%]; Computador 3 [95%]; Computador 4 [95%]; Jhon Monroy; Kevin Cendales; Marlon Jaramillo; Yeren Palacios; Electricidad [95%]; Internet [95%] | 96h | 96h | 600,826.65 | 598,080 |
| 4 | 1.3 | Mapa de procesos | 2d | 2020-05-11 A | 2020-05-12 | 3 | 99% | 0d | 6d | 3d | start no earlier than 2020-05-11 | Computador 1 [95%]; Computador 2 [95%]; Computador 3 [95%]; Computador 4 [95%]; Jhon Monroy; Kevin Cendales; Marlon Jaramillo; Yeren Palacios; Electricidad [95%]; Internet [95%] | 64h | 64h | 401,466.65 | 398,720 |
| 5 | 1.4 | Control de versiones | 3d | 2020-05-18 A | 2020-05-20 | 4 | 99% | 0d | 11d | 7d | start no earlier than 2020-05-18 | Computador 1 [95%]; Computador 2 [95%]; Computador 3 [95%]; Computador 4 [95%]; Jhon Monroy; Kevin Cendales; Marlon Jaramillo; Yeren Palacios; Electricidad [95%]; Internet [95%] | 96h | 96h | 600,826.65 | 598,080 |
| 6 | 1.5 | Requerimientos | 5d | 2020-06-01 A | 2020-06-05 | 5 | 80% | 1d | 14d | 10d | start no earlier than 2020-06-01 | Computador 1 [95%]; Computador 2 [95%]; Computador 3 [95%]; Computador 4 [95%]; Jhon Monroy; Kevin Cendales; Marlon Jaramillo; Yeren Palacios; Electricidad [95%]; Internet [95%] | 160h | 128h | 999,546.65 | 799,264 |
| 7 | 1.6 | Casos de uso | 4d | 2020-06-22 A | 2020-06-25 | 6 | 99% | 0d | 6d |  | start no earlier than 2020-06-22 | Computador 1 [95%]; Computador 2 [95%]; Computador 3 [95%]; Computador 4 [95%]; Jhon Monroy; Kevin Cendales; Marlon Jaramillo; Yeren Palacios; Electricidad [95%]; Internet [95%] | 128h | 128h | 800,186.65 | 797,440 |
| 8 | 2 | **Diseño** | 66d | 2020-07-06 A | 2020-10-05 | 1 | 87% | 8.61d | 9d |  | start no earlier than 2020-07-03 |  | 736h | 640h | 4,604,506.55 | 3,989,860 |
| 9 | 2.1 | Modelo entidad relacion | 5d | 2020-07-06 A | 2020-07-10 |  | 99% | 0d | 1d | 0d | start no earlier than 2020-07-06 | Computador 1 [95%]; Computador 2 [95%]; Computador 3 [95%]; Computador 4 [95%]; Jhon Monroy; Kevin Cendales; Marlon Jaramillo; Yeren Palacios; Electricidad [95%]; Internet [95%] | 160h | 160h | 999,546.65 | 996,800 |
| 10 | 2.2 | Diccionario de datos | 1d | 2020-07-13 A | 2020-07-13 | 9 | 99% | 0d | 11d | 9d | start no earlier than 2020-07-13 | Computador 1 [95%]; Computador 2 [95%]; Computador 3 [95%]; Computador 4 [95%]; Jhon Monroy; Kevin Cendales; Marlon Jaramillo; Yeren Palacios; Electricidad [95%]; Internet [95%] | 32h | 32h | 202,106.65 | 199,360 |
| 11 | 2.3 | Cronograma | 2d | 2020-07-27 A | 2020-07-28 | 10 | 99% | 0d | 10d | 8d | start no earlier than 2020-07-27 | Computador 1 [95%]; Computador 2 [95%]; Computador 3 [95%]; Computador 4 [95%]; Jhon Monroy; Kevin Cendales; Marlon Jaramillo; Yeren Palacios; Electricidad [95%]; Internet [95%] | 64h | 64h | 401,466.65 | 398,720 |
| 12 | 2.4 | Diagrama de distribuccion | 4d | 2020-08-10 A | 2020-08-13 | 11 | 50% | 2d | 11d | 6d | start no earlier than 2020-08-10 | Computador 1 [95%]; Computador 2 [95%]; Computador 3 [95%]; Computador 4 [95%]; Jhon Monroy; Kevin Cendales; Marlon Jaramillo; Yeren Palacios; Electricidad [95%]; Internet [95%] | 128h | 64h | 800,186.65 | 399,860 |
| 13 | 2.5 | Diagrama de clases | 5d | 2020-08-24 A | 2020-08-28 | 12 | 99% | 0d | 4d | 1d | start no earlier than 2020-08-24 | Computador 1 [95%]; Computador 2 [95%]; Computador 3 [95%]; Computador 4 [95%]; Jhon Monroy; Kevin Cendales; Marlon Jaramillo; Yeren Palacios; Electricidad [95%]; Internet [95%] | 160h | 160h | 999,546.65 | 996,800 |
| 14 | 2.6 | Prototipo | 3d | 2020-09-01 A | 2020-09-03 | 13 | 99% | 0d | 21d | 19d | start no earlier than 2020-09-01 | Computador 1 [95%]; Computador 2 [95%]; Computador 3 [95%]; Computador 4 [95%]; Jhon Monroy; Kevin Cendales; Marlon Jaramillo; Yeren Palacios; Electricidad [95%]; Internet [95%] | 96h | 96h | 600,826.65 | 598,080 |
| 15 | 2.7 | Normalizacion del modelo entidad | 3d | 2020-10-01 A | 2020-10-05 | 14 | 67% | 1d | 9d |  | start no earlier than 2020-10-01 | Computador 1 [95%]; Computador 2 [95%]; Computador 3 [95%]; Computador 4 [95%]; Jhon Monroy; Kevin Cendales; Marlon Jaramillo; Yeren Palacios; Electricidad [95%]; Internet [95%] | 96h | 64h | 600,826.65 | 400,240 |
| 16 | 3 | **Desarrollo** | 71d | 2020-10-19 A | 2021-01-25 | 8 | 95% | 3.74d | 5d |  | start no earlier than 2020-10-12 |  | 608h | 576h | 3,801,573.25 | 3,590,190 |
| 17 | 3.1 | Contruccion de bd | 3d | 2020-10-19 A | 2020-10-21 |  | 99% | 0d | 10d | 7d | start no earlier than 2020-10-19 | Computador 1 [95%]; Computador 2 [95%]; Computador 3 [95%]; Computador 4 [95%]; Jhon Monroy; Kevin Cendales; Marlon Jaramillo; Yeren Palacios; Electricidad [95%]; Internet [95%] | 96h | 96h | 600,826.65 | 598,080 |
| 18 | 3.2 | Consultas de bd | 4d | 2020-11-02 A | 2020-11-05 | 17 | 75% | 1d | 21d | 11d | start no earlier than 2020-11-02 | Computador 1 [95%]; Computador 2 [95%]; Computador 3 [95%]; Computador 4 [95%]; Jhon Monroy; Kevin Cendales; Marlon Jaramillo; Yeren Palacios; Electricidad [95%]; Internet [95%] | 128h | 96h | 800,186.65 | 599,790 |
| 19 | 3.3 | Prototipo no funcional | 10d | 2020-11-23 A | 2020-12-04 | 18 | 99% | 0d | 21d | 20d | start no earlier than 2020-11-23 | Computador 1 [95%]; Computador 2 [95%]; Computador 3 [95%]; Computador 4 [95%]; Jhon Monroy; Kevin Cendales; Marlon Jaramillo; Yeren Palacios; Electricidad [95%]; Internet [95%] | 320h | 320h | 1,996,346.65 | 1,993,600 |
| 20 | 3.4 | Inventario | 1d | 2021-01-04 A | 2021-01-04 | 19 | 99% | 0d | 15d | 14d | start no earlier than 2021-01-04 | Computador 1 [95%]; Computador 2 [95%]; Computador 3 [95%]; Computador 4 [95%]; Jhon Monroy; Kevin Cendales; Marlon Jaramillo; Yeren Palacios; Electricidad [95%]; Internet [95%] | 32h | 32h | 202,106.65 | 199,360 |
| 21 | 3.5 | Informe de costos | 1d | 2021-01-25 A | 2021-01-25 | 20 | 99% | 0d | 5d |  | start no earlier than 2021-01-25 | Computador 1 [95%]; Computador 2 [95%]; Computador 3 [95%]; Computador 4 [95%]; Jhon Monroy; Kevin Cendales; Marlon Jaramillo; Yeren Palacios; Electricidad [95%]; Internet [95%] | 32h | 32h | 202,106.65 | 199,360 |
| 22 | 4 | **Pruebas** | 35.62d? | 2021-02-02 A | 2021-03-23 | 16 | 35% | 23.23d? |  |  | start no earlier than 2021-02-01 |  | 736h | 256h | 4,604,506.55 | 1,600,373.3 |
| 23 | 4.1 | Pruebas caja negra y blanca | 3d | 2021-02-02 A | 2021-02-04 A |  | 100% |  |  |  | start no earlier than 2021-02-01 | Computador 1 [95%]; Computador 2 [95%]; Computador 3 [95%]; Computador 4 [95%]; Jhon Monroy; Kevin Cendales; Marlon Jaramillo; Yeren Palacios; Electricidad [95%]; Internet [95%] | 96h | 96h | 600,826.65 | 600,826.65 |
| 24 | 4.2 | Manual de instalacion | 2d | 2021-02-08 A | 2021-02-09 A | 23 | 100% |  |  |  | start no earlier than 2021-02-08 | Computador 1 [95%]; Computador 2 [95%]; Computador 3 [95%]; Computador 4 [95%]; Jhon Monroy; Kevin Cendales; Marlon Jaramillo; Yeren Palacios; Electricidad [95%]; Internet [95%] | 64h | 64h | 401,466.65 | 401,466.65 |
| 25 | 4.3 | Pruebas unitarias | 3d? | 2021-02-15 A | 2021-02-17 | 24 | 99% | 0d? | 110.38d | 2d | start no earlier than 2021-02-15 | Computador 1 [95%]; Computador 2 [95%]; Computador 3 [95%]; Computador 4 [95%]; Jhon Monroy; Kevin Cendales; Marlon Jaramillo; Yeren Palacios; Electricidad [95%]; Internet [95%] | 96h | 96h | 600,826.65 | 598,080 |
| 26 | 4.4 | Manual tecnico | 5d | 2021-02-22 | 2021-02-26 | 25 |  |  | 108.38d | 0d | start no earlier than 2021-02-21 | Computador 1 [95%]; Computador 2 [95%]; Computador 3 [95%]; Computador 4 [95%]; Jhon Monroy; Kevin Cendales; Marlon Jaramillo; Yeren Palacios; Electricidad [95%]; Internet [95%] | 160h |  | 999,546.65 |  |
| 27 | 4.5 | Diagrama de distribución | 3d | 2021-03-01 | 2021-03-03 | 26 |  |  | 108.38d | 0d | start no earlier than 2021-02-21 | Computador 1 [95%]; Computador 2 [95%]; Computador 3 [95%]; Computador 4 [95%]; Jhon Monroy; Kevin Cendales; Marlon Jaramillo; Yeren Palacios; Electricidad [95%]; Internet [95%] | 96h |  | 600,826.65 |  |
| 28 | 4.6 | Informe de migración | 4d | 2021-03-04 | 2021-03-09 | 27 |  |  | 108.38d | 0d | start no earlier than 2021-02-16 | Computador 1 [95%]; Computador 2 [95%]; Computador 3 [95%]; Computador 4 [95%]; Jhon Monroy; Kevin Cendales; Marlon Jaramillo; Yeren Palacios; Electricidad [95%]; Internet [95%] | 128h |  | 800,186.65 |  |
| 29 | 4.7 | Plan de instalación | 3d | 2021-03-10 | 2021-03-12 | 28 |  |  | 108.38d |  |  | Computador 1 [95%]; Computador 2 [95%]; Computador 3 [95%]; Computador 4 [95%]; Jhon Monroy; Kevin Cendales; Marlon Jaramillo; Yeren Palacios; Electricidad [95%]; Internet [95%] | 96h |  | 600,826.65 |  |

| ID | WBS | Task | Duration | Start | Finish | Predecessors | Total slack | Free slack | Constraint | Resources | Work | Cost |
| --- | --- | --- | --- | --- | --- | --- | --- | --- | --- | --- | --- | --- |
| 30 | 5 | **Implementación** | 43d | 2021-03-12 | 2021-05-11 |  |  |  |  |  | 288h | 1,802,479.95 |
| 31 | 5.1 | Cuadro comparativo de proveedores | 3d | 2021-03-12 | 2021-03-16 |  | 98.38d | 8d |  | Computador 1 [95%]; Computador 2 [95%]; Computador 3 [95%]; Computador 4 [95%]; Jhon Monroy; Kevin Cendales; Marlon Jaramillo; Yeren Palacios; Electricidad [95%]; Internet [95%] | 96h | 600,826.65 |
| 32 | 5.2 | Contrato de desarrollo de software | 2d | 2021-03-29 | 2021-03-30 | 31 | 92.38d | 13d | start no earlier than 2021-03-29 | Computador 1 [95%]; Computador 2 [95%]; Computador 3 [95%]; Computador 4 [95%]; Jhon Monroy; Kevin Cendales; Marlon Jaramillo; Yeren Palacios; Electricidad [95%]; Internet [95%] | 64h | 401,466.65 |
| 33 | 5.3 | Documentación de las pruebas | 4d | 2021-04-19 | 2021-04-22 | 32 | 79.38d |  | start no earlier than 2021-04-19 | Computador 1 [95%]; Computador 2 [95%]; Computador 3 [95%]; Computador 4 [95%]; Jhon Monroy; Kevin Cendales; Marlon Jaramillo; Yeren Palacios; Electricidad [95%]; Internet [95%] | 128h | 800,186.65 |
| 34 | 6 | **Trimestre 6** | 67d | 2021-05-12 | 2021-08-12 | 30 |  |  |  |  | 256h | 1,603,119.95 |
| 35 | 6.1 | Modelo de calidad | 3d | 2021-05-12 | 2021-05-14 |  | 58.38d | 10d |  | Computador 1 [95%]; Computador 2 [95%]; Computador 3 [95%]; Computador 4 [95%]; Jhon Monroy; Kevin Cendales; Marlon Jaramillo; Yeren Palacios; Electricidad [95%]; Internet [95%] | 96h | 600,826.65 |
| 36 | 6.2 | Manual de usuario | 3d | 2021-05-31 | 2021-06-02 | 35 | 48.38d | 27d | start no earlier than 2021-05-31 | Computador 1 [95%]; Computador 2 [95%]; Computador 3 [95%]; Computador 4 [95%]; Jhon Monroy; Kevin Cendales; Marlon Jaramillo; Yeren Palacios; Electricidad [95%]; Internet [95%] | 96h | 600,826.65 |
| 37 | 6.3 | Manual de operación | 2d | 2021-07-12 | 2021-07-13 | 36 | 21.38d |  | start no earlier than 2021-07-12 | Computador 1 [95%]; Computador 2 [95%]; Computador 3 [95%]; Computador 4 [95%]; Jhon Monroy; Kevin Cendales; Marlon Jaramillo; Yeren Palacios; Electricidad [95%]; Internet [95%] | 64h | 401,466.65 |
